# ПараметрическийАнализ

How a schedule from MS Project changed from version to version. A marks actual dates.

## Version 1 (saved 2025-10-21, file ПараметрическийАнализ.mpp)

| ID | WBS | Task | Duration | Start | Finish | Predecessors | Total float |
| --- | --- | --- | --- | --- | --- | --- | --- |
| 1 |  | Начало проекта | 0d | 2011-02-01 | 2011-02-01 |  | 0d |
| 2 | 2 | **Выравнивание стен** | 28d | 2011-02-01 | 2011-03-10 |  | 131d |
| 3 |  | Стены в спальне | 4d | 2011-02-01 | 2011-02-04 | 1 | 131d |
| 4 |  | Стены в гостиной | 6d | 2011-02-07 | 2011-03-01 | 3 | 131d |
| 5 |  | Стены в кухне | 3d | 2011-03-02 | 2011-03-04 | 4 | 131d |
| 6 |  | Стены в прихожей | 4d | 2011-03-07 | 2011-03-10 | 5 | 131d |
| 7 |  | Выравнивание стен завершено | 0d | 2011-03-10 | 2011-03-10 | 6 | 131d |
| 8 | 3 | **Санузел** | 159d | 2011-02-01 | 2011-09-09 |  | 0d |
| 9 |  | Снятие штукатурки в санузле | 3d | 2011-02-01 | 2011-02-03 | 1 | 0d |
| 10 |  | Отделка стен санузла | 4d | 2011-02-04 | 2011-02-09 | 9 | 0d |
| 11 |  | Отделка потолка санузла | 2d | 2011-02-10 | 2011-02-11 | 10 | 0d |
| 12 |  | Отделка пола санузла | 2d | 2011-02-14 | 2011-02-15 | 11 | 0d |
| 13 |  | Установка сантехнического оборудования | 2d | 2011-02-16 | 2011-09-09 | 12 | 0d |
| 14 |  | Ремонт санузла завершен | 0d | 2011-09-09 | 2011-09-09 | 13 | 0d |
| 15 | 4 | **Ванная** | 13d | 2011-02-01 | 2011-02-17 |  | 146d |
| 16 |  | Снятие штукатурки в ванной | 3d | 2011-02-01 | 2011-02-03 | 1 | 146d |
| 17 |  | Отделка стен ванной | 5d | 2011-02-04 | 2011-02-10 | 16 | 146d |
| 18 |  | Отделка потолка ванной | 2d | 2011-02-11 | 2011-02-14 | 17 | 146d |
| 19 |  | Отделка пола ванной | 2d | 2011-02-15 | 2011-02-16 | 18 | 146d |
| 20 |  | Установка сантехники | 1d | 2011-02-17 | 2011-02-17 | 19 | 146d |
| 21 |  | Ремонт ванной завершен | 0d | 2011-02-17 | 2011-02-17 | 20 | 146d |
| 22 | 5 | **Отделка стен** | 15.5d | 2011-09-12 | 2011-10-03 |  | 0d |
| 23 |  | Отделка стен в спальне | 5d | 2011-09-12 | 2011-09-16 | 7, 14, 21 | 0d |
| 24 |  | Отделка стен в гостиной | 7d | 2011-09-19 | 2011-09-27 | 23 | 0d |
| 25 |  | Отделка стен в кухне | 2.5d | 2011-09-28 | 2011-09-30 | 24 | 0d |
| 26 |  | Отделка стен в прихожей | 0d | 2011-09-30 | 2011-10-03 | 25 | 0d |
| 27 |  | Отделка стен завершена | 0d | 2011-10-03 | 2011-10-03 | 26 | 7d |
| 28 | 6 | **Потолки** | 148.5d | 2011-03-11 | 2011-10-05 |  | 5d |
| 29 |  | Замер | 2d | 2011-03-11 | 2011-03-14 | 7 | 131.5d |
| 30 |  | Заказ и оплата потолков | 2d | 2011-03-15 | 2011-03-16 | 29 | 131.5d |
| 31 |  | Навесной потолок в спальне | 2d | 2011-09-19 | 2011-09-20 | 23, 30FS+10d | 9.5d |
| 32 |  | Навесной потолок в гостиной | 2d | 2011-09-28 | 2011-09-29 | 24, 30FS+10d | 2.5d |
| 33 |  | Панельный потолок в кухне | 2d | 2011-09-30 | 2011-10-04 | 25, 30 | 3d |
| 34 |  | Навесной потолок в прихожей | 2d | 2011-10-03 | 2011-10-05 | 26, 30FS+10d | 0d |
| 35 |  | Монтаж потолков завершен | 0d | 2011-10-05 | 2011-10-05 | 31, 32, 33, 34 | 5d |
| 36 | 7 | **Полы** | 15.5d | 2011-09-21 | 2011-10-12 |  | 0d |
| 37 |  | Отделка полов в спальне | 6d | 2011-09-21 | 2011-09-28 | 31 | 9.5d |
| 38 |  | Отделка полов в гостиной | 6d | 2011-09-30 | 2011-10-07 | 32 | 2.5d |
| 39 |  | Отделка полов в кухне | 3d | 2011-10-04 | 2011-10-07 | 33 | 3d |
| 40 |  | Отделка полов в прихожей | 5d | 2011-10-05 | 2011-10-12 | 34 | 0d |
| 41 |  | Отделка полов завершена | 0d | 2011-10-12 | 2011-10-12 | 37, 38, 39, 40 | 0d |
| 42 |  | Конец проекта | 0d | 2011-10-12 | 2011-10-12 | 41 | 0d |

## Version 2 (saved 2025-10-21, file Короткая.mpp)

Last finish stays 2011-10-12. Complete tasks 0 → 1.

Changed:

| ID | Task | Start | Finish | Complete | Total float |
| --- | --- | --- | --- | --- | --- |
| 8 | **Санузел** | 2011-02-01 A |  | 0% → 23% |  |
| 9 | Снятие штукатурки в санузле | 2011-02-01 A | 2011-02-03 A | 0% → 100% | 0d → none |

## Version 3 (saved 2025-10-21, file Длинные.mpp)

Last finish 2011-10-12 → 2011-10-19 (+7d).

Changed:

| ID | Task | Start | Finish | Duration | Total float |
| --- | --- | --- | --- | --- | --- |
| 15 | **Ванная** |  | 2011-02-17 → 2011-03-01 (+12d) | 13d → 21d | 146d → 138d |
| 17 | Отделка стен ванной | 2011-02-04 → 2011-02-16 (+12d) | 2011-02-10 → 2011-02-22 (+12d) |  | 146d → 138d |
| 18 | Отделка потолка ванной | 2011-02-11 → 2011-02-23 (+12d) | 2011-02-14 → 2011-02-24 (+10d) |  | 146d → 138d |
| 19 | Отделка пола ванной | 2011-02-15 → 2011-02-25 (+10d) | 2011-02-16 → 2011-02-28 (+12d) |  | 146d → 138d |
| 20 | Установка сантехники | 2011-02-17 → 2011-03-01 (+12d) | 2011-02-17 → 2011-03-01 (+12d) |  | 146d → 138d |
| 21 | Ремонт ванной завершен | 2011-02-17 → 2011-03-01 (+12d) | 2011-02-17 → 2011-03-01 (+12d) |  | 146d → 138d |
| 36 | **Полы** |  | 2011-10-12 → 2011-10-19 (+7d) | 15.5d → 21d |  |
| 39 | Отделка полов в кухне | 2011-10-04 → 2011-10-17 (+13d) | 2011-10-07 → 2011-10-19 (+12d) |  | 3d → 0d |
| 40 | Отделка полов в прихожей | 2011-10-05 → 2011-10-10 (+5d) | 2011-10-12 → 2011-10-14 (+2d) |  | 0d → 3d |
| 41 | Отделка полов завершена | 2011-10-12 → 2011-10-19 (+7d) | 2011-10-12 → 2011-10-19 (+7d) |  |  |
| 42 | Конец проекта | 2011-10-12 → 2011-10-19 (+7d) | 2011-10-12 → 2011-10-19 (+7d) |  |  |

## Version 4 (saved 2025-10-21, file РесурсыРазногоВида.mpp)

Last finish stays 2011-10-19. Complete tasks 1 → 0.

Changed:

| ID | Task | Start | Finish | Duration | Complete | Total float |
| --- | --- | --- | --- | --- | --- | --- |
| 8 | **Санузел** | 2011-02-01 A → 2011-02-01 |  |  | 23% → 0% |  |
| 9 | Снятие штукатурки в санузле | 2011-02-01 A → 2011-02-01 | 2011-02-03 A → 2011-02-03 |  | 100% → 0% | none → 0d |
| 15 | **Ванная** | 2011-02-01 → 2011-02-04 (+3d) |  | 21d → 18d |  |  |
| 16 | Снятие штукатурки в ванной | 2011-02-01 → 2011-02-04 (+3d) | 2011-02-03 → 2011-02-08 (+5d) |  |  |  |
